# TT-Cronograma v05 (ACTUAL)

Schedule from MS Project, 2019-10-08 to 2020-12-30, A marks actual dates.

## Calendars

- Estándar: Mon-Fri 09:00-13:00, 15:00-19:00; Sat-Sun off. Exceptions (off unless hours are given): 2020-03-16 (No hay clases), 2020-04-09 to 2020-04-17 (Vacaciones), 2020-05-01 (Dia del trabajo), 2020-08-03 to 2020-09-04 (Vacaciones de verano), 2020-09-16 (Dia inhabil 1), 2020-11-01 (Dia inhabil 2), 2020-12-14 to 2021-01-07 (Vacaciones de invierno).

## Schedule

| ID | WBS | Task | Type | Duration | Start | Finish | Predecessors | Complete | Remaining | Actual finish | Total slack | Constraint |
| --- | --- | --- | --- | --- | --- | --- | --- | --- | --- | --- | --- | --- |
| 1 | 1 | **Junta de status** |  | 184d | 2020-02-11 A | 2020-12-30 |  | 35% | 119.06d |  |  |  |
| 2 | 1.1 | Junta de status |  | 1d | 2020-02-11 A | 2020-02-11 A |  | 100% |  |  |  | start no earlier than 2020-02-11 |
| 3 | 1.2 | Junta de status |  | 1d | 2020-02-18 A | 2020-02-18 A |  | 100% |  |  |  | start no earlier than 2020-02-18 |
| 4 | 1.3 | Junta de status |  | 1d | 2020-03-04 A | 2020-03-04 A |  | 100% |  |  |  | start no earlier than 2020-03-04 |
| 5 | 1.4 | Junta de status |  | 1d | 2020-03-11 A | 2020-03-11 A |  | 100% |  |  |  | start no earlier than 2020-03-11 |
| 6 | 1.5 | Junta de status |  | 1d | 2020-03-31 A | 2020-03-31 A |  | 100% |  |  |  | start no earlier than 2020-03-25 |
| 7 | 1.6 | Junta de status |  | 1d | 2020-04-22 A | 2020-04-22 A |  | 100% |  |  |  | start no earlier than 2020-04-22 |
| 8 | 1.7 | Junta de status |  | 1d | 2020-05-20 | 2020-05-20 |  |  |  |  | 121d | start no earlier than 2020-05-20 |
| 9 | 1.8 | Junta de status |  | 1d | 2020-07-29 | 2020-07-29 |  |  |  |  | 71d | start no earlier than 2020-07-29 |
| 10 | 1.9 | Junta de status |  | 1d | 2020-09-07 | 2020-09-07 |  |  |  |  | 68d | start no earlier than 2020-08-12 |
| 11 | 1.10 | Junta de status |  | 1d | 2020-09-07 | 2020-09-07 |  |  |  |  | 68d | start no earlier than 2020-08-26 |
| 12 | 1.11 | Junta de status |  | 1d | 2020-09-09 | 2020-09-09 |  |  |  |  | 66d | start no earlier than 2020-09-09 |
| 13 | 1.12 | Junta de status |  | 1d | 2020-09-23 | 2020-09-23 |  |  |  |  | 57d | start no earlier than 2020-09-23 |
| 14 | 1.13 | Junta de status |  | 1d | 2020-10-07 | 2020-10-07 |  |  |  |  | 47d | start no earlier than 2020-10-07 |
| 15 | 1.14 | Junta de status |  | 1d | 2020-10-21 | 2020-10-21 |  |  |  |  | 37d | start no earlier than 2020-10-21 |
| 16 | 1.15 | Junta de status |  | 1d | 2020-11-04 | 2020-11-04 |  |  |  |  | 27d | start no earlier than 2020-11-04 |
| 17 | 1.16 | Junta de status |  | 1d | 2020-11-18 | 2020-11-18 |  |  |  |  | 17d | start no earlier than 2020-11-18 |
| 18 | 1.17 | Junta de status |  | 1d | 2020-12-02 | 2020-12-02 |  |  |  |  | 7d | start no earlier than 2020-12-02 |
| 19 | 2 | **Comunicación** |  | 144d? | 2019-10-08 A | 2020-05-07 |  | 98% | 3.06d? |  | 0d |  |
| 20 | 2.1 | **Iniciar proyecto** |  | 104d? | 2019-10-08 A | 2020-02-28 |  | 100% |  | 2020-02-21 |  |  |
| 21 | 2.1.1 | **Recopilar información acerca del dominio** |  | 54d | 2019-10-08 A | 2019-12-20 |  | 100% |  | 2019-11-06 |  |  |
| 22 | 2.1.1.1 | Análisis de la situación actual | manual | 20d | 2019-10-08 A | 2019-11-04 A |  | 100% |  |  |  |  |
| 23 | 2.1.1.2 | Identificar el alcance del proyecto | manual | 2d | 2019-11-05 A | 2019-11-06 A |  | 100% |  |  |  |  |
| 24 | 2.1.2 | **Documentar Protocolo** |  | 54d | 2019-10-08 A | 2019-12-20 |  | 100% |  | 2019-12-23 |  |  |
| 25 | 2.1.2.1 | Realización de protocolo | manual | 53d | 2019-10-08 A | 2019-12-19 A |  | 100% |  |  |  |  |
| 26 | 2.1.2.2 | Verificación de protocolo | manual | 1d | 2019-12-20 A | 2019-12-20 A | 25 | 100% |  |  |  |  |
| 27 | 2.1.2.3 | Validación de protocolo |  | 1d | 2019-12-23 A | 2019-12-23 A | 26 | 100% |  |  |  |  |

Notes:
- 5: 11 Con Profe Héctor / 18 Con Mtra. Julia

| ID | WBS | Task | Type | Duration | Start | Finish | Predecessors | Complete | Remaining | Actual start | Actual finish | Total slack | Constraint |
| --- | --- | --- | --- | --- | --- | --- | --- | --- | --- | --- | --- | --- | --- |
| 28 | 2.1.3 | **Toma de requerimientos** |  | 3d | 2020-02-13 A | 2020-02-17 A |  | 100% |  |  |  |  |  |
| 29 | 2.1.3.1 | Primera Reunión con el Cliente | manual | 1d | 2020-02-13 A | 2020-02-13 A |  | 100% |  |  |  |  |  |
| 30 | 2.1.3.2 | Identificar y capturar los requerimientos | manual | 2d | 2020-02-14 A | 2020-02-17 A | 29 | 100% |  |  |  |  |  |
| 31 | 2.1.4 | **Documentar la solicitud de trabajo(ST)** |  | 11d | 2020-02-14 | 2020-02-28 |  | 100% |  | 2020-02-18 | 2020-02-21 |  |  |
| 32 | 2.1.4.1 | Realización de ST | manual | 2d | 2020-02-18 A | 2020-02-19 A | 30 | 100% |  |  |  |  |  |
| 33 | 2.1.4.2 | Verificación de ST | manual | 1d | 2020-02-20 A | 2020-02-20 A | 32 | 100% |  |  |  |  |  |
| 34 | 2.1.4.3 | Validación de ST | manual | 1d | 2020-02-21 A | 2020-02-21 A | 33 | 100% |  |  |  |  |  |
| 35 | 2.2 | **Análisis de Requerimientos** |  | 47d | 2020-02-20 A | 2020-05-07 |  | 80% | 9.4d |  |  | 0d |  |
| 36 | 2.2.1 | **Análisis de Requerimientos** |  | 2d | 2020-02-20 A | 2020-02-21 A |  | 100% |  |  |  |  |  |
| 37 | 2.2.1.1 | **Estructurar y priorizar los requerimientos** |  | 2d | 2020-02-20 A | 2020-02-21 A |  | 100% |  |  |  |  |  |
| 38 | 2.2.1.1.1 | Identificar requisitos funcionales | manual | 1d | 2020-02-20 A | 2020-02-20 A | 30 | 100% |  |  |  |  |  |
| 39 | 2.2.1.1.2 | Identificar requisitos no funcionales | manual | 1d | 2020-02-21 A | 2020-02-21 A | 38 | 100% |  |  |  |  |  |
| 40 | 2.2.2 | **Perfeccionamiento de requerimientos** |  | 37d | 2020-02-26 A | 2020-04-28 |  | 67% | 12.33d |  |  | 0d |  |
| 41 | 2.2.2.1 | Detallar requerimientos | manual | 2d | 2020-04-27 A | 2020-04-28 | 39 | 50% | 1d |  |  |  |  |
| 42 | 2.2.2.2 | Realizar Diagrama Conceptual | manual | 1d | 2020-02-26 A | 2020-02-26 A | 41 | 100% |  |  |  |  |  |
| 43 | 2.2.3 | **Documentar la especificación de Requerimientos** |  | 4d | 2020-04-27 A | 2020-04-30 A |  | 100% |  |  |  |  |  |
| 44 | 2.2.3.1 | Realizar SRS |  | 1d | 2020-04-27 A | 2020-04-27 A | 41 | 100% |  |  |  |  |  |
| 45 | 2.2.3.2 | Verificar SRS | manual | 1d | 2020-04-30 A | 2020-04-30 A | 44 | 100% |  |  |  |  |  |
| 46 | 2.2.4 | Realizar Registro de Trazabilidad |  | 1d | 2020-04-29 A | 2020-04-29 A | 44 | 100% |  |  |  |  |  |
| 47 | 2.2.5 | Verificación de requerimientos |  | 1d | 2020-04-30 A | 2020-04-30 A | 44 | 100% |  |  |  |  | start no earlier than 2020-04-30 |
| 48 | 2.2.6 | Validación de requerimientos | manual | 1d | 2020-05-07 | 2020-05-07 | 56 |  |  |  |  |  |  |
| 49 | 3 | **Planeación** |  | 47d | 2020-02-14 A | 2020-04-30 |  | 95% | 2.19d |  |  | 134d |  |
| 50 | 3.1 | **Elaborar Plan de proyecto** |  | 8d | 2020-02-14 A | 2020-02-25 A |  | 100% |  |  |  |  |  |
| 51 | 3.1.1 | **Elaboración de plan de proyecto** |  | 2d | 2020-02-14 A | 2020-02-17 A |  | 100% |  |  |  |  |  |
| 52 | 3.1.1.1 | Identificar las Tareas específicas a realizar para producir los entregables | manual | 1d | 2020-02-14 A | 2020-02-14 A | 29 | 100% |  |  |  |  |  |
| 53 | 3.1.1.2 | Incluir las Tareas del proceso de Implementación de Software sobre verificación, validación y revisiones con los Clientes y el Equipo de Trabajo |  | 1d | 2020-02-14 A | 2020-02-17 A | 52 | 100% |  |  |  |  | finish no earlier than 2020-02-14 |
| 54 | 3.1.1.3 | Identificar las Tareas para realizar las Instrucciones de entrega. |  | 1d | 2020-02-17 A | 2020-02-17 A | 53 | 100% |  |  |  |  | finish no earlier than 2020-02-17 |
| 55 | 3.1.1.4 | Elaboración de Cronograma | manual | 2d | 2020-02-14 A | 2020-02-17 A |  | 100% |  |  |  |  |  |
| 56 | 3.1.2 | Verificación del Plan de Proyecto |  | 1d | 2020-02-18 A | 2020-02-18 A |  | 100% |  |  |  |  | finish no earlier than 2020-02-18 |
| 57 | 3.1.3 | Validación del Plan de Proyecto | manual | 2d | 2020-02-24 A | 2020-02-25 A | 56 | 100% |  |  |  |  |  |

| ID | WBS | Task | Type | Duration | Start | Finish | Predecessors | Complete | Remaining | Actual finish | Total slack | Constraint |
| --- | --- | --- | --- | --- | --- | --- | --- | --- | --- | --- | --- | --- |
| 58 | 3.2 | **Establecer la Estrategia de Control de Versiones.** |  | 1d | 2020-02-14 A | 2020-02-14 |  | 50% | 0.5d |  |  |  |
| 59 | 3.2.1 | Establecer y preparar el repositorio del proyecto |  | 1d | 2020-02-14 A | 2020-02-14 |  | 50% | 0.5d |  | 180d | finish no earlier than 2020-02-14 |
| 60 | 3.3 | **Diseñar Plan de Riesgos y Contingencia** |  | 45d | 2020-02-18 A | 2020-04-30 |  | 97% | 1.5d |  | 134d |  |
| 61 | 3.3.1 | Identificar y documentar los riesgos que pueden afectar el proyecto. | manual | 2d | 2020-02-18 A | 2020-02-19 A |  | 100% |  |  |  |  |
| 62 | 3.3.2 | Documentar plan de Riesgos, contingencia y mitigación | manual | 3d | 2020-02-20 A | 2020-02-24 A | 61 | 100% |  |  |  |  |
| 63 | 3.3.3 | Verificación de plan de Riesgos |  | 1d | 2020-04-30 A | 2020-04-30 | 62, 3 | 80% | 0.2d |  | 134d | start no earlier than 2020-04-30 |
| 64 | 4 | Capacitación |  | 10d | 2020-02-25 A | 2020-03-09 A | 62 | 100% |  |  |  | start no earlier than 2020-02-18 |
| 65 | 5 | **Modelado** |  | 64d? | 2020-03-10 A | 2020-06-18 | 64 | 39% | 39.06d? |  | 100d |  |
| 66 | 5.1 | **Diseñar comportamiento del sistema** |  | 30d | 2020-03-10 A | 2020-04-30 | 64 | 31% | 20.62d |  | 0d |  |
| 67 | 5.1.1 | Elaboración de diagrama de casos de uso |  | 3d | 2020-03-10 A | 2020-03-12 A | 64 | 100% |  |  |  |  |
| 68 | 5.1.2 | Elaboración de diagrama de secuencia |  | 9d | 2020-04-16 A | 2020-04-30 | 67 | 22% | 7d |  | 0d | finish no earlier than 2020-04-30 |
| 69 | 5.1.3 | Elaboración de diagrama de actividades |  | 2d | 2020-03-13 | 2020-03-17 | 67 |  |  |  | 0d |  |
| 70 | 5.1.4 | Elaboración de diagrama de despliegue |  | 2d | 2020-03-18 | 2020-03-19 | 69 |  |  |  | 0d |  |
| 71 | 5.2 | **Diseñar arquitectura** |  | 29d? | 2020-03-20 A | 2020-05-11 | 66 | 92% | 2.32d? |  | 128d |  |
| 72 | 5.2.1 | **Definir conformación en subsistemas y Componente de Software** |  | 8d | 2020-03-20 A | 2020-03-31 | 66 | 100% |  | 2020-04-30 |  |  |
| 73 | 5.2.1.1 | Elaboración de diagrama de componentes |  | 2d | 2020-03-20 A | 2020-03-23 A | 66 | 100% |  |  |  |  |
| 74 | 5.2.1.2 | **Elaboración de diagrama de base de datos** |  | 19d | 2020-03-24 A | 2020-04-28 A | 73 | 100% |  |  |  |  |
| 75 | 5.2.1.2.1 | Diagrama de árbol |  | 2d | 2020-03-24 A | 2020-03-25 A |  | 100% |  |  |  |  |
| 76 | 5.2.1.2.2 | Diagrama de documentos |  | 1d | 2020-04-28 A | 2020-04-28 A | 75 | 100% |  |  |  |  |
| 77 | 5.2.1.3 | Elaboración de diagrama de clases |  | 2d | 2020-04-29 A | 2020-04-30 A | 68, 74 | 100% |  |  |  |  |
| 78 | 5.2.2 | Definir conformación en subsistemas y Componente de Hardware |  | 6d? | 2020-05-04 A | 2020-05-11 | 77 | 80% | 1.2d? |  | 128d |  |
| 79 | 5.2.3 | **Definir interfaces internas y externas.** |  | 2d | 2020-04-30 A | 2020-05-04 A | 72 | 100% |  |  |  |  |
| 80 | 5.2.3.1 | Diseño de Prototipos |  | 2d | 2020-04-30 A | 2020-05-04 A | 72 | 100% |  |  |  | finish no earlier than 2020-05-04 |
| 81 | 5.3 | Verificar el Diseño de Software |  | 1d | 2020-05-05 A | 2020-05-05 | 80 | 80% | 0.2d |  | 0d | finish no earlier than 2020-04-06 |
| 82 | 5.4 | Validar del Diseño de Software |  | 2d | 2020-05-06 | 2020-05-07 | 81 |  |  |  | 130d |  |

| ID | WBS | Task | Type | Duration | Start | Finish | Predecessors | Complete | Remaining | Total slack | Free slack | Constraint |
| --- | --- | --- | --- | --- | --- | --- | --- | --- | --- | --- | --- | --- |
| 83 | 5.5 | **Definir las Instrucciones de Entrega para los entregables** |  | 18d | 2020-05-06 A | 2020-05-29 | 81 | 60% | 7.2d | -4d | 0d |  |
| 84 | 5.5.1 | Definir las tareas requeridas para realizar las Instrucciones de Entrega |  | 1d | 2020-05-06 A | 2020-05-06 A | 81 | 100% |  |  |  | finish no earlier than 2020-04-27 |
| 85 | 5.5.2 | Definir el contenido y estructura de cada producto |  | 1d | 2020-05-06 A | 2020-05-06 A | 81 | 100% |  |  |  | finish no earlier than 2020-04-28 |
| 86 | 5.5.3 | Definir los medios para entregar cada producto software |  | 1d | 2020-05-06 A | 2020-05-06 A | 81 | 100% |  |  |  | finish no earlier than 2020-04-29 |
| 87 | 5.5.4 | Verificar Formulario de Instrucciones de Entrega |  | 1d | 2020-05-28 | 2020-05-28 | 86 |  |  | -4d | 0d | start no earlier than 2020-05-28 |
| 88 | 5.5.5 | Validar Formulario de Instrucciones de Entrega |  | 1d | 2020-05-29 | 2020-05-29 | 87 |  |  | -4d | 0d | finish no earlier than 2020-05-07 |
| 89 | 5.6 | **Diseñar Casos de Prueba y Procedimientos de Prueba** |  | 15d | 2020-05-26 | 2020-06-15 | 83 |  |  | 0d |  |  |
| 90 | 5.6.1 | **Identificar de necesidades de las pruebas unitarias , de integración y de sistema** |  | 5d | 2020-05-26 | 2020-06-01 | 83 |  |  | 0d |  |  |
| 91 | 5.6.1.1 | Identificación de secciones para P. unitarias | manual | 1d | 2020-05-26 | 2020-05-26 |  |  |  |  |  |  |
| 92 | 5.6.1.2 | Identificación de secciones para P. Integración | manual | 2d | 2020-05-27 | 2020-05-28 | 91 |  |  |  |  |  |
| 93 | 5.6.1.3 | Identificación de secciones para P. Sistema | manual | 2d | 2020-05-29 | 2020-06-01 | 92 |  |  |  |  |  |
| 94 | 5.6.2 | **Diseñar los Casos de Prueba** |  | 10d | 2020-06-01 | 2020-06-12 |  |  |  | 5d |  |  |
| 95 | 5.6.2.1 | Análisis y aplicación de técnicas de diseño de pruebas |  | 1d | 2020-06-01 | 2020-06-01 |  |  |  | 102d | 0d |  |
| 96 | 5.6.2.2 | **Identificación de casos de prueba** |  | 6d | 2020-06-02 | 2020-06-09 | 95 |  |  | 102d |  |  |
| 97 | 5.6.2.2.1 | Identificacion de Casos de Prueba Unitarias |  | 2d | 2020-06-02 | 2020-06-03 | 91 |  |  | 102d | 0d |  |
| 98 | 5.6.2.2.2 | Identificacion de Casos de Prueba Integración |  | 2d | 2020-06-04 | 2020-06-05 | 97 |  |  | 102d | 0d |  |
| 99 | 5.6.2.2.3 | Identificacion de Casos de Prueba Sistema |  | 2d | 2020-06-08 | 2020-06-09 | 98 |  |  | 102d | 2d |  |
| 100 | 5.6.2.3 | **Establecer los procedimientos de prueba** |  | 5d | 2020-06-08 | 2020-06-12 |  |  |  | 0d |  |  |
| 101 | 5.6.2.3.1 | Establecer los procedimientos de p. unitaria | manual | 1d | 2020-06-08 | 2020-06-08 | 97 |  |  |  |  |  |
| 102 | 5.6.2.3.2 | Establecer los procedimientos de p.Integración | manual | 1d | 2020-06-10 | 2020-06-10 | 98 |  |  |  |  |  |
| 103 | 5.6.2.3.3 | Establecer los procedimientos de p.Sistema | manual | 1d | 2020-06-12 | 2020-06-12 | 99 |  |  |  |  |  |
| 104 | 5.6.3 | Verificar Casos de Prueba y Procedimientos de Prueba |  | 1d | 2020-06-15 | 2020-06-15 | 100 |  |  | 100d |  | finish no earlier than 2020-05-21 |
| 105 | 5.7 | **Actualizar el Repositorio** |  | 3d | 2020-06-16 | 2020-06-18 | 89 |  |  | 100d |  |  |
| 106 | 5.7.1 | Actualizar el Registro de Trazabilidad incorporando los Casos de Prueba y Procedimientos de Prueba. |  | 1d | 2020-06-16 | 2020-06-16 | 89 |  |  | 100d | 0d | finish no earlier than 2020-04-30 |
| 107 | 5.7.2 | Incorporar el Diseño de Software y el Registro de Trazabilidad a la Configuración de Software como parte de la línea base. |  | 1d | 2020-06-17 | 2020-06-17 | 106 |  |  | 100d | 0d | finish no earlier than 2020-04-30 |
| 108 | 5.7.3 | Incorporar los Casos de Prueba y Procedimientos de Prueba al Repositorio del Proyecto. |  | 1d | 2020-06-18 | 2020-06-18 | 107 |  |  | 100d |  | finish no earlier than 2020-04-30 |
| 110 | 6 | Preparación de Reporte Final TT I |  | 13d | 2020-06-01 | 2020-06-17 |  |  |  | 101d |  | finish no earlier than 2020-06-17 |
| 111 | 7 | Entrega Reporte Final |  | 1d | 2020-06-23 | 2020-06-23 |  |  |  | 97d |  | start no earlier than 2020-06-23 |
| 112 | 8 | Preparación TT I |  | 11d | 2020-06-17 | 2020-07-01 |  |  |  | 90d | 0d | finish no earlier than 2020-07-01 |
| 113 | 9 | Presentación TT 1 |  | 1d | 2020-07-02 | 2020-07-02 | 112 |  |  | 90d |  |  |

| ID | WBS | Task | Duration | Start | Finish | Predecessors | Total slack | Free slack | Constraint |
| --- | --- | --- | --- | --- | --- | --- | --- | --- | --- |
| 114 | 10 | **Construcción** | 58d | 2020-07-03 | 2020-10-28 |  |  |  |  |
| 115 | 10.1 | **Codificación** | 53d | 2020-07-03 | 2020-10-21 |  | 0d |  |  |
| 116 | 10.1.1 | **Construir y codificar los componentes o módulos de Software** | 44d | 2020-07-03 | 2020-10-08 |  |  |  |  |
| 117 | 10.1.1.1 | Construcción de módulo de base de datos | 8d | 2020-07-03 | 2020-07-14 |  | 2d | 0d | start no earlier than 2020-07-03 |
| 118 | 10.1.1.2 | Construcción de sistema de visión artificial | 10d | 2020-07-15 | 2020-07-28 | 117 | 28d | 0d |  |
| 119 | 10.1.1.3 | Construcción de sistema de reconocimiento | 20d | 2020-07-29 | 2020-09-30 | 118 | 28d | 0d | start no earlier than 2020-07-01 |
| 120 | 10.1.1.4 | Codificación de módulo de diagnostico | 5d | 2020-07-15 | 2020-07-21 | 117 | 2d | 0d |  |
| 121 | 10.1.1.5 | Construcción de interfaz grafica de usuario | 10d | 2020-07-22 | 2020-09-08 | 120 | 2d | 0d |  |
| 122 | 10.1.1.6 | Codificar módulo bluetooth para método de entrada | 3d | 2020-09-09 | 2020-09-11 | 121 | 2d | 0d |  |
| 123 | 10.1.1.7 | Codificación de sistema embebido | 8d | 2020-09-14 | 2020-09-24 | 122 | 2d | 0d |  |
| 124 | 10.1.1.8 | Codificación de módulo generador de reportes | 5d | 2020-09-25 | 2020-10-01 | 123 | 2d | 0d |  |
| 125 | 10.1.1.9 | Codificación de módulo de respaldo y restauración | 5d | 2020-10-02 | 2020-10-08 | 124 | 2d | 0d |  |
| 126 | 10.1.2 | **Construir los componentes o módulos de Hardware** | 15d | 2020-10-01 | 2020-10-21 |  | 28d |  |  |
| 127 | 10.1.2.1 | Integración de módulo bluetooth | 4d | 2020-10-01 | 2020-10-06 | 119 | 28d | 0d |  |
| 128 | 10.1.2.2 | Integración de sensor angular | 4d | 2020-10-07 | 2020-10-12 | 127 | 28d | 0d |  |
| 129 | 10.1.2.3 | Montaje en plicómetro | 7d | 2020-10-13 | 2020-10-21 | 128 | 28d |  |  |
| 130 | 10.2 | **Realizar Pruebas** | 71d | 2020-07-15 | 2020-11-26 |  | 0d |  |  |
| 131 | 10.2.1 | **Aplicar Casos de Pruebas Unitarias** | 38d | 2020-07-15 | 2020-10-12 |  | 0d |  |  |
| 132 | 10.2.1.1 | **Prueba de módulo de base de datos** | 4d | 2020-07-15 | 2020-07-20 |  |  |  |  |
| 133 | 10.2.1.1.1 | Codificar las Pruebas | 2d | 2020-07-15 | 2020-07-16 | 117 | 36d | 0d |  |
| 134 | 10.2.1.1.2 | Ejecutar las Pruebas | 2d | 2020-07-17 | 2020-07-20 | 133 | 36d |  |  |
| 135 | 10.2.1.1.3 | Analizar y documentar los resultados | 2d | 2020-07-17 | 2020-07-20 | 133 | 36d |  |  |
| 136 | 10.2.1.2 | **Prueba de sistema de visión artificial** | 3d | 2020-07-29 | 2020-07-31 |  |  |  |  |
| 137 | 10.2.1.2.1 | Codificar las Pruebas | 2d | 2020-07-29 | 2020-07-30 | 118 | 46d | 0d |  |
| 138 | 10.2.1.2.2 | Ejecutar las Pruebas | 1d | 2020-07-31 | 2020-07-31 | 137 | 46d |  |  |
| 139 | 10.2.1.2.3 | Analizar y documentar los resultados | 1d | 2020-07-31 | 2020-07-31 | 137 | 46d |  |  |

| ID | WBS | Task | Type | Duration | Start | Finish | Predecessors | Total slack | Free slack |
| --- | --- | --- | --- | --- | --- | --- | --- | --- | --- |
| 140 | 10.2.1.3 | **Prueba de sistema de reconocimiento** |  | 3d | 2020-10-01 | 2020-10-05 |  | 40d |  |
| 141 | 10.2.1.3.1 | Codificar las Pruebas |  | 1d | 2020-10-01 | 2020-10-01 | 119 | 40d | 0d |
| 142 | 10.2.1.3.2 | Ejecutar las Pruebas |  | 1d | 2020-10-02 | 2020-10-02 | 141 | 41d |  |
| 143 | 10.2.1.3.3 | Analizar y documentar los resultados |  | 2d | 2020-10-02 | 2020-10-05 | 141 | 40d |  |
| 144 | 10.2.1.4 | **Prueba de módulo de diagnostico** |  | 4d | 2020-07-22 | 2020-07-27 |  |  |  |
| 145 | 10.2.1.4.1 | Codificar las Pruebas |  | 2d | 2020-07-22 | 2020-07-23 | 120 | 64d | 0d |
| 146 | 10.2.1.4.2 | Ejecutar las Pruebas |  | 2d | 2020-07-24 | 2020-07-27 | 145 | 64d |  |
| 147 | 10.2.1.4.3 | Analizar y documentar los resultados |  | 2d | 2020-07-24 | 2020-07-27 | 145 | 64d |  |
| 148 | 10.2.1.5 | **Prueba de interfaz grafica de usuario** |  | 4d | 2020-09-09 | 2020-09-14 |  | 54d |  |
| 149 | 10.2.1.5.1 | Codificar las Pruebas |  | 2d | 2020-09-09 | 2020-09-10 | 121 | 54d | 0d |
| 150 | 10.2.1.5.2 | Ejecutar las Pruebas |  | 2d | 2020-09-11 | 2020-09-14 | 149 | 54d |  |
| 151 | 10.2.1.5.3 | Analizar y documentar los resultados |  | 2d | 2020-09-11 | 2020-09-14 | 149 | 54d |  |
| 152 | 10.2.1.6 | **Prueba de módulo bluetooth para método de entrada** |  | 4d | 2020-09-14 | 2020-09-18 |  | 51d |  |
| 153 | 10.2.1.6.1 | Codificar las Pruebas |  | 2d | 2020-09-14 | 2020-09-15 | 122 | 51d | 0d |
| 154 | 10.2.1.6.2 | Ejecutar las Pruebas |  | 2d | 2020-09-17 | 2020-09-18 | 153 | 51d |  |
| 155 | 10.2.1.6.3 | Analizar y documentar los resultados |  | 2d | 2020-09-17 | 2020-09-18 | 153 | 51d |  |
| 156 | 10.2.1.7 | **Prueba de sistema embebido** |  | 2d | 2020-09-25 | 2020-09-28 |  |  |  |
| 157 | 10.2.1.7.1 | Codificar las Pruebas | manual | 1d | 2020-09-25 | 2020-09-25 | 123 |  |  |
| 158 | 10.2.1.7.2 | Ejecutar las Pruebas |  | 1d | 2020-09-28 | 2020-09-28 | 157 | 45d |  |
| 159 | 10.2.1.7.3 | Analizar y documentar los resultados |  | 1d | 2020-09-28 | 2020-09-28 | 157 | 45d |  |
| 160 | 10.2.1.8 | **Prueba de módulo generador de reportes** |  | 2d | 2020-10-02 | 2020-10-05 |  |  |  |
| 161 | 10.2.1.8.1 | Codificar las Pruebas | manual | 1d | 2020-10-02 | 2020-10-02 | 124 |  |  |
| 162 | 10.2.1.8.2 | Ejecutar las Pruebas |  | 1d | 2020-10-05 | 2020-10-05 | 161 | 40d |  |
| 163 | 10.2.1.8.3 | Analizar y documentar los resultados |  | 1d | 2020-10-05 | 2020-10-05 | 161 | 40d |  |

| ID | WBS | Task | Type | Duration | Start | Finish | Predecessors | Total slack | Free slack |
| --- | --- | --- | --- | --- | --- | --- | --- | --- | --- |
| 164 | 10.2.1.9 | **Prueba de módulo de respaldo y restauración** |  | 2d | 2020-10-09 | 2020-10-12 |  |  |  |
| 165 | 10.2.1.9.1 | Codificar las Pruebas | manual | 1d | 2020-10-09 | 2020-10-09 | 125 |  |  |
| 166 | 10.2.1.9.2 | Ejecutar las Pruebas |  | 1d | 2020-10-12 | 2020-10-12 | 165 | 2d |  |
| 167 | 10.2.1.9.3 | Analizar y documentar los resultados |  | 1d | 2020-10-12 | 2020-10-12 | 165 | 2d |  |
| 168 | 10.2.2 | **Realizar pruebas de Integración** |  | 25d | 2020-10-13 | 2020-11-16 | 164 | 2d | 0d |
| 169 | 10.2.2.1 | **Prueba de módulo de base de datos** |  | 4d | 2020-10-13 | 2020-10-16 |  | 2d | 0d |
| 170 | 10.2.2.1.1 | Codificar las Pruebas |  | 2d | 2020-10-13 | 2020-10-14 | 132 | 2d | 0d |
| 171 | 10.2.2.1.2 | Ejecutar las Pruebas |  | 2d | 2020-10-15 | 2020-10-16 | 170 | 2d |  |
| 172 | 10.2.2.1.3 | Analizar y documentar los resultados |  | 2d | 2020-10-15 | 2020-10-16 | 170 | 2d |  |
| 173 | 10.2.2.2 | **Prueba de sistema de visión artificial** |  | 3d | 2020-10-13 | 2020-10-15 |  | 21d | 0d |
| 174 | 10.2.2.2.1 | Codificar las Pruebas |  | 2d | 2020-10-13 | 2020-10-14 | 136 | 21d | 0d |
| 175 | 10.2.2.2.2 | Ejecutar las Pruebas |  | 1d | 2020-10-15 | 2020-10-15 | 174 | 21d |  |
| 176 | 10.2.2.2.3 | Analizar y documentar los resultados |  | 1d | 2020-10-15 | 2020-10-15 | 174 | 21d |  |
| 177 | 10.2.2.3 | **Prueba de sistema de reconocimiento** |  | 3d | 2020-10-16 | 2020-10-20 |  | 21d |  |
| 178 | 10.2.2.3.1 | Codificar las Pruebas |  | 1d | 2020-10-16 | 2020-10-16 | 173 | 21d | 0d |
| 179 | 10.2.2.3.2 | Ejecutar las Pruebas |  | 1d | 2020-10-19 | 2020-10-19 | 178 | 22d |  |
| 180 | 10.2.2.3.3 | Analizar y documentar los resultados |  | 2d | 2020-10-19 | 2020-10-20 | 178 | 21d |  |
| 181 | 10.2.2.4 | **Prueba de interfaz grafica de usuario** |  | 4d | 2020-10-19 | 2020-10-22 |  | 2d | 0d |
| 182 | 10.2.2.4.1 | Codificar las Pruebas |  | 2d | 2020-10-19 | 2020-10-20 | 169 | 2d | 0d |
| 183 | 10.2.2.4.2 | Ejecutar las Pruebas |  | 2d | 2020-10-21 | 2020-10-22 | 182 | 2d |  |
| 184 | 10.2.2.4.3 | Analizar y documentar los resultados |  | 2d | 2020-10-21 | 2020-10-22 | 182 | 2d |  |
| 185 | 10.2.2.5 | **Prueba de módulo bluetooth para método de entrada** |  | 4d | 2020-10-23 | 2020-10-28 |  | 2d | 0d |
| 186 | 10.2.2.5.1 | Codificar las Pruebas |  | 2d | 2020-10-23 | 2020-10-26 | 181 | 2d | 0d |
| 187 | 10.2.2.5.2 | Ejecutar las Pruebas |  | 2d | 2020-10-27 | 2020-10-28 | 186 | 2d |  |
| 188 | 10.2.2.5.3 | Analizar y documentar los resultados |  | 2d | 2020-10-27 | 2020-10-28 | 186 | 2d |  |

| ID | WBS | Task | Duration | Start | Finish | Predecessors | Total slack | Free slack | Constraint |
| --- | --- | --- | --- | --- | --- | --- | --- | --- | --- |
| 189 | 10.2.2.6 | **Prueba de sistema embebido** | 3d | 2020-10-29 | 2020-11-02 |  | 2d | 0d |  |
| 190 | 10.2.2.6.1 | Codificar las Pruebas | 2d | 2020-10-29 | 2020-10-30 | 185 | 2d | 0d |  |
| 191 | 10.2.2.6.2 | Ejecutar las Pruebas | 1d | 2020-11-02 | 2020-11-02 | 190 | 2d |  |  |
| 192 | 10.2.2.6.3 | Analizar y documentar los resultados | 1d | 2020-11-02 | 2020-11-02 | 190 | 2d |  |  |
| 193 | 10.2.2.7 | **Prueba de módulo de diagnostico** | 4d | 2020-11-03 | 2020-11-06 |  | 2d | 0d |  |
| 194 | 10.2.2.7.1 | Codificar las Pruebas | 2d | 2020-11-03 | 2020-11-04 | 189 | 2d | 0d |  |
| 195 | 10.2.2.7.2 | Ejecutar las Pruebas | 2d | 2020-11-05 | 2020-11-06 | 194 | 2d |  |  |
| 196 | 10.2.2.7.3 | Analizar y documentar los resultados | 2d | 2020-11-05 | 2020-11-06 | 194 | 2d |  |  |
| 197 | 10.2.2.8 | **Prueba de módulo generador de reportes** | 4d | 2020-11-09 | 2020-11-12 |  | 2d | 0d |  |
| 198 | 10.2.2.8.1 | Codificar las Pruebas | 2d | 2020-11-09 | 2020-11-10 | 193 | 2d | 0d |  |
| 199 | 10.2.2.8.2 | Ejecutar las Pruebas | 2d | 2020-11-11 | 2020-11-12 | 198 | 2d |  |  |
| 200 | 10.2.2.8.3 | Analizar y documentar los resultados | 2d | 2020-11-11 | 2020-11-12 | 198 | 2d |  |  |
| 201 | 10.2.2.9 | **Prueba de módulo de respaldo y restauración** | 2d | 2020-11-13 | 2020-11-16 |  | 2d | 0d |  |
| 202 | 10.2.2.9.1 | Codificar las Pruebas | 1d | 2020-11-13 | 2020-11-13 | 197 | 2d | 0d |  |
| 203 | 10.2.2.9.2 | Ejecutar las Pruebas | 1d | 2020-11-16 | 2020-11-16 | 202 | 2d |  |  |
| 204 | 10.2.2.9.3 | Analizar y documentar los resultados | 1d | 2020-11-16 | 2020-11-16 | 202 | 2d |  |  |
| 205 | 10.2.3 | **Realizar pruebas de Sistema** | 6d | 2020-11-17 | 2020-11-24 | 168 | 2d |  |  |
| 206 | 10.2.3.1 | Establecer el ambiente de prueba. | 3d | 2020-11-17 | 2020-11-19 | 201 | 2d | 0d | start no earlier than 2020-09-30 |
| 207 | 10.2.3.2 | Ejecución de las iteraciones de pruebas | 3d | 2020-11-20 | 2020-11-24 | 206 | 4d |  | start no earlier than 2020-10-05 |
| 208 | 10.2.3.3 | Analizar y documentar los resultados | 3d | 2020-11-20 | 2020-11-24 | 206 | 2d | 0d | start no earlier than 2020-10-08 |
| 209 | 10.2.4 | **Cierre del procedimiento de pruebas** | 2d | 2020-11-25 | 2020-11-26 | 208 | 2d | 0d |  |
| 210 | 10.2.4.1 | Documentar los resultados en el Reporte de Pruebas. | 2d | 2020-11-25 | 2020-11-26 | 208 | 2d |  | start no earlier than 2020-10-07 |
| 211 | 11 | **Despliegue** | 9d? | 2020-11-27 | 2020-12-09 | 114 | 2d |  |  |
| 212 | 11.1 | **Cierre de proyecto** | 9d? | 2020-11-27 | 2020-12-09 | 130 | 2d |  |  |
| 213 | 11.1.1 | **Documentar el Manual de Mantenimiento** | 3d? | 2020-11-27 | 2020-12-01 |  | 2d | 0d |  |
| 214 | 11.1.1.1 | Realizar Manual de Mantenimiento. | 1d? | 2020-11-27 | 2020-11-27 | 114 | 2d | 0d |  |
| 215 | 11.1.1.2 | Verificar Manual de Mantenimiento. | 1d | 2020-11-30 | 2020-11-30 | 214 | 2d | 0d |  |
| 216 | 11.1.1.3 | Aprobar Manual de Mantenimiento. | 1d | 2020-12-01 | 2020-12-01 | 215 | 2d |  |  |
| 217 | 11.1.2 | Incorporar el Manual de Mantenimiento a la línea base de la Configuración del Software | 1d | 2020-11-27 | 2020-11-27 | 209 | 10d |  |  |

| ID | WBS | Task | Type | Duration | Start | Finish | Predecessors | Total slack | Free slack | Constraint |
| --- | --- | --- | --- | --- | --- | --- | --- | --- | --- | --- |
| 218 | 11.1.3 | **Entrega de Producto** |  | 2d | 2020-12-02 | 2020-12-03 |  | 2d |  |  |
| 219 | 11.1.3.1 | Comprender la Configuración de Software. |  | 2d | 2020-12-02 | 2020-12-03 | 213 | 2d | 0d |  |
| 220 | 11.1.4 | **Formalizar la conclusión del proyecto** |  | 3d | 2020-12-04 | 2020-12-08 |  | 2d | 0d |  |
| 221 | 11.1.4.1 | Obtener la copia aprobada del Formulario de Instrucciones de Entrega |  | 1d | 2020-12-04 | 2020-12-04 | 219 | 2d | 0d | finish no earlier than 2020-10-21 |
| 222 | 11.1.4.2 | Realizar entrega |  | 1d | 2020-12-07 | 2020-12-07 | 221 | 2d | 0d | finish no earlier than 2020-10-22 |
| 223 | 11.1.4.3 | Firma de Acta de Aceptación |  | 1d | 2020-12-08 | 2020-12-08 | 222 | 2d |  | finish no earlier than 2020-10-23 |
| 224 | 11.1.5 | Actualizar el Repositorio del Proyecto. |  | 1d | 2020-12-09 | 2020-12-09 | 220 | 2d |  | start no earlier than 2020-10-26 |
| 225 | 12 | Preparación de Reporte Final TT II |  | 13d | 2019-11-19 | 2019-12-05 |  | 231d |  |  |
| 226 | 13 | Entrega Reporte Final TT II |  | 1d | 2020-11-19 | 2020-11-19 |  | 4d | 0d | finish no earlier than 2020-11-19 |
| 227 | 14 | Preparación Presentación TT II | manual | 11d | 2020-11-20 | 2020-12-04 | 226 |  |  |  |
| 228 | 15 | Presentación TT II |  | 1d | 2020-12-07 | 2020-12-07 | 227 | 4d |  |  |
